Schedule from MS Project, 2026-06-01 to 2026-12-22, costs in COP, A marks actual dates.
Microsoft

## Calendars

- Cerebrum: Mon-Fri 09:00-13:00, 15:00-19:00; Sat-Sun off. Exceptions (off unless hours are given): 2026-06-08 (Corpus Christi), 2026-06-15 (Sagrado Corazón), 2026-06-29 (San Pedro y San Pablo).
- 24 horas: Mon-Sun 00:00-24:00.

## Resources

| Resource | Rate | Cost per use |
| --- | --- | --- |
| Desarrollador (indef) | 14083 |  |
| Desarrollador (indef) | 14083 |  |
| Analista (Fijo) | 14083 |  |
| Analista Fijo | 14083 |  |
| Servidores (app nube) | 536000 |  |
| Licencias de Software(Libres) |  |  |
| Equipos de cómputo | 6000000 |  |
| Wifi |  |  |
| Servicios publicos |  |  |
| Freelance |  | 4000000 |
| Licencia movil (Anual) | 500000 |  |

## Schedule

| ID | WBS | Task | Type | Duration | Start | Finish | Predecessors | Complete | Remaining | Total slack | Constraint | Calendar | Resources | Work | Actual work | Cost | Actual cost |
| --- | --- | --- | --- | --- | --- | --- | --- | --- | --- | --- | --- | --- | --- | --- | --- | --- | --- |
| 1 | 1 | **Cerebrum** |  | 143.5d | 2026-06-01 A | 2026-12-22 |  | 29% | 102.28d | 0d |  |  |  | 3452h | 1120h | 57,397,236 | 21,772,960 |
| 2 | 1.1 | INICIO | milestone | 0d | 2026-06-01 A | 2026-06-01 A |  | 100% |  |  |  |  |  |  |  |  |  |
| 3 | 1.2 | **1. Planificación** |  | 10d | 2026-06-01 A | 2026-06-16 |  | 99% | 0d | 133.5d |  |  |  | 320h | 320h | 10,506,560 | 10,506,560 |
| 4 | 1.2.1 | Metas generales del proyecto y alcance inicial |  | 10d | 2026-06-01 A | 2026-06-16 A |  | 100% |  |  | start no earlier than 2026-06-01 |  | Desarrollador (indef); Analista (Fijo) | 160h | 160h | 2,253,280 | 2,253,280 |
| 5 | 1.2.2 | Cronograma y asignación de tareas o responsabilidades |  | 10d | 2026-06-01 A | 2026-06-16 A |  | 100% |  |  | start no earlier than 2026-06-01 |  | Desarrollador (indef) [20%] | 16h | 16h | 225,328 | 225,328 |
| 6 | 1.2.3 | Identificación de los recursos necesarios comprar equipos/licencias |  | 10d | 2026-06-01 A | 2026-06-16 |  | 99% | 0d | 133.5d | start no earlier than 2026-06-01 |  | Analista Fijo; Desarrollador (indef) [80%]; Equipos de cómputo; Servicios publicos [0.1%]; Wifi [0.1%] | 144h | 144h | 8,027,952 | 8,027,952 |
| 7 | 1.3 | **2. Análisis** |  | 15d | 2026-06-17 A | 2026-07-08 A |  | 100% |  |  |  |  |  | 480h | 480h | 6,759,840 | 6,759,840 |
| 8 | 1.3.1 | problematica de los usuarios o del cliente. |  | 10d | 2026-06-17 A | 2026-07-01 A | 6 | 100% |  |  | start no earlier than 2026-05-05 |  | Desarrollador (indef); Analista Fijo | 160h | 160h | 2,253,280 | 2,253,280 |
| 9 | 1.3.2 | Definición de requisitos funcionales |  | 10d | 2026-06-17 A | 2026-07-01 A | 6 | 100% |  |  | start no earlier than 2026-05-05 |  | Desarrollador (indef) | 80h | 80h | 1,126,640 | 1,126,640 |
| 10 | 1.3.3 | Definición de requisitos no funcionales |  | 10d | 2026-06-17 A | 2026-07-01 A | 6 | 100% |  |  | start no earlier than 2026-05-05 |  | Analista (Fijo) | 80h | 80h | 1,126,640 | 1,126,640 |
| 11 | 1.3.4 | Elaboración de la documentación de requerimientos |  | 5d | 2026-07-02 A | 2026-07-08 A | 8, 9, 10 | 100% |  |  | start no earlier than 2026-05-05 |  | Analista Fijo; Desarrollador (indef); Analista (Fijo) | 160h | 160h | 2,253,280 | 2,253,280 |
| 12 | 1.4 | **3. Diseño** |  | 10d | 2026-07-09 A | 2026-07-22 A |  | 100% |  |  |  |  |  | 320h | 320h | 4,506,560 | 4,506,560 |
| 13 | 1.4.1 | Definición de la estructura general del software |  | 5d | 2026-07-09 A | 2026-07-15 A | 11 | 100% |  |  | finish no earlier than 2026-06-18 |  | Desarrollador (indef); Analista (Fijo); Analista Fijo | 160h | 160h | 2,253,280 | 2,253,280 |
| 14 | 1.4.2 | Modelado de bases de datos y diagramas técnicos (UML). |  | 5d | 2026-07-16 A | 2026-07-22 A | 13 | 100% |  |  | start no earlier than 2026-05-27 |  | Desarrollador (indef); Analista Fijo | 80h | 80h | 1,126,640 | 1,126,640 |
| 15 | 1.4.3 | Diseño de interfaces de usuario (wireframes y prototipos) |  | 5d | 2026-07-16 A | 2026-07-22 A | 13 | 100% |  |  | start no earlier than 2026-05-27 |  | Analista (Fijo); Desarrollador (indef) | 80h | 80h | 1,126,640 | 1,126,640 |
| 16 | 1.5 | **4. Implementación** |  | 58.5d | 2026-07-23 | 2026-10-13 |  |  |  | 0d |  |  |  | 1212h |  | 17,068,596 |  |
| 17 | 1.5.1 | Configuración del entorno de trabajo y control de versiones |  | 1d | 2026-07-23 | 2026-07-23 | 14, 15 |  |  | 0d | start no earlier than 2026-06-19 |  | Desarrollador (indef); Analista (Fijo); Analista Fijo | 32h |  | 450,656 |  |
| 18 | 1.5.2 | Bases de datos |  | 10d | 2026-07-24 | 2026-08-06 | 17, 14 |  |  | 97.5d |  |  | Analista (Fijo); Desarrollador (indef) | 160h |  | 2,253,280 |  |
| 19 | 1.5.3 | Frontend |  | 40d | 2026-07-24 | 2026-09-17 | 17 |  |  | 0d | start no earlier than 2026-06-19 |  | Desarrollador (indef) [50%] | 160h |  | 2,253,280 |  |
| 20 | 1.5.4 | Backend |  | 40d | 2026-07-24 | 2026-09-17 | 17 |  |  | 0d | start no earlier than 2026-06-19 |  | Analista Fijo; Desarrollador (indef) [50%] | 480h |  | 6,759,840 |  |
| 21 | 1.5.5 | integracion de módulos |  | 17.5d | 2026-09-18 | 2026-10-13 | 19, 20 |  |  | 0d |  |  | Desarrollador (indef); Analista (Fijo); Analista Fijo | 380h |  | 5,351,540 |  |
| 22 | 1.6 | **5. Pruebas** |  | 15d | 2026-10-13 | 2026-11-03 |  |  |  | 0d |  |  |  | 560h |  | 9,633,200 |  |
| 23 | 1.6.1 | Pruebas unitarias |  | 10d | 2026-10-13 | 2026-10-27 | 21 |  |  | 0d | start no earlier than 2026-06-19 |  | Desarrollador (indef) | 80h |  | 1,126,640 |  |
| 24 | 1.6.2 | Pruebas de integración |  | 10d | 2026-10-13 | 2026-10-27 | 21 |  |  | 0d | start no earlier than 2026-06-19 |  | Desarrollador (indef) | 80h |  | 1,126,640 |  |
| 25 | 1.6.3 | Pruebas de Usabilidad e interfaces responsivas |  | 10d | 2026-10-13 | 2026-10-27 | 21 |  |  | 0d | start no earlier than 2026-06-19 |  | Analista (Fijo) | 80h |  | 1,126,640 |  |
| 26 | 1.6.4 | Empaquetado móvil (android,apple) |  | 20d | 2026-10-13 | 2026-10-20 | 21 |  |  | 22.25d | start no earlier than 2026-08-27 | 24 horas | Freelance | 160h |  | 4,000,000 |  |
| 27 | 1.6.5 | Detección, reporte y corrección de errores o fallos antes de la entrega |  | 5d | 2026-10-27 | 2026-11-03 | 23, 24, 25, 26 |  |  | 0d |  |  | Desarrollador (indef); Analista (Fijo); Analista Fijo | 160h |  | 2,253,280 |  |

| ID | WBS | Task | Type | Duration | Start | Finish | Predecessors | Total slack | Constraint | Resources | Work | Cost |
| --- | --- | --- | --- | --- | --- | --- | --- | --- | --- | --- | --- | --- |
| 28 | 1.7 | **6. Despliegue** |  | 35d | 2026-11-03 | 2026-12-22 |  | 0d |  |  | 560h | 8,922,480 |
| 29 | 1.7.1 | Configuración y planes de servidores , host |  | 10d | 2026-11-03 | 2026-11-17 | 27 | 0d | start no earlier than 2026-06-19 | Desarrollador (indef); Licencia movil (Anual); Servidores (app nube) | 160h | 3,289,280 |
| 30 | 1.7.2 | Lanzamiento oficial de la aplicación para que esté disponible para los usuarios |  | 10d | 2026-11-17 | 2026-12-01 | 29, 26 | 0d | start no earlier than 2026-06-09 | Desarrollador (indef) | 160h | 2,253,280 |
| 31 | 1.7.3 | Monitoreo inicial posterior al lanzamiento y soporte básico |  | 15d | 2026-12-01 | 2026-12-22 | 30 | 0d | start no earlier than 2026-06-19 | Desarrollador (indef) | 240h | 3,379,920 |
| 32 | 1.8 | Fin | milestone | 0d | 2026-12-22 | 2026-12-22 | 31 | 0d | start no earlier than 2026-07-06 |  |  |  |
